How a schedule from MS Project changed from version to version. A marks actual dates.

## Version 1 (saved 2022-10-23, file Bai_3-6-2.mpp)

Note of the change: Upload Ass 2

| ID | WBS | Task | Duration | Start | Finish | Predecessors | Total float | Constraint |
| --- | --- | --- | --- | --- | --- | --- | --- | --- |
| 1 | 1 | **Total** | 84d | 2022-10-03 | 2023-01-26 |  | 0d |  |
| 2 | 1.1 | **XÁC ĐỊNH YÊU CẦU CHUNG** | 56h | 2022-10-03 | 2022-10-11 |  |  |  |
| 3 | 1.1.1 | **Thu thập yêu cầu** | 4d? | 2022-10-03 | 2022-10-06 |  | 10d |  |
| 4 |  | Gặp gỡ khách hàng | 1d? | 2022-10-03 | 2022-10-03 |  | 10d |  |
| 5 |  | Phân tích yêu cầu của khách hàng | 2d | 2022-10-04 | 2022-10-05 | 4 | 10d |  |
| 6 |  | Họp đội DEV, tổng hợp ý kiến | 1d? | 2022-10-06 | 2022-10-06 | 5 | 10d |  |
| 7 | 1.1.2 | **Xây dựng đề án** | 3d? | 2022-10-07 | 2022-10-11 |  | 10d |  |
| 8 |  | Viết đề án | 2d | 2022-10-07 | 2022-10-10 | 6 | 10d |  |
| 9 |  | Trình bày đề án với khách hàng | 1d? | 2022-10-11 | 2022-10-11 | 8 | 10d |  |
| 10 | 1.2 | **THIẾT KẾ HỆ THỐNG** | 28d | 2022-10-12 | 2022-11-18 | 2 | 10d |  |
| 11 |  | Thiết kế kiến trúc hệ thống | 56h | 2022-10-12 | 2022-10-20 |  | 10d |  |
| 12 | 1.2.2 | **Vẽ các lược đồ minh họa cho các chức năng hệ thống** | 7d | 2022-10-21 | 2022-10-31 | 11 | 10d |  |
| 13 |  | Xem trạng các thiết bị của từng phòng | 56h | 2022-10-21 | 2022-10-31 | 11 | 10d |  |
| 14 |  | Xem lượng điện tiêu thụ | 56h | 2022-10-21 | 2022-10-31 | 11 | 10d |  |
| 15 |  | Điều khiển các thiết bị | 56h | 2022-10-21 | 2022-10-31 | 11 | 10d |  |
| 16 |  | Cảnh báo khi có bất thường xảy ra (thiết bị hoạt động khi không có người…) | 56h | 2022-10-21 | 2022-10-31 | 11 | 10d |  |
| 17 |  | Thống kê dữ liệu | 56h | 2022-10-21 | 2022-10-31 | 11 | 10d |  |
| 18 | 1.2.3 | **Thiết kế giao diện hệ thống** | 10d | 2022-11-01 | 2022-11-14 | 12 | 10d |  |
| 19 |  | Giao diện xác thực người quản lý | 80h | 2022-11-01 | 2022-11-14 | 12 | 14d |  |
| 20 |  | Giao diện tổng quát tình trạng của cả tòa nhà. | 80h | 2022-11-01 | 2022-11-14 | 12 | 14d |  |
| 21 |  | Giao diện điều khiển các thiết bị từng phòng. | 80h | 2022-11-01 | 2022-11-14 | 12 | 14d |  |
| 22 |  | Giao diện log cảnh báo | 56h | 2022-11-01 | 2022-11-09 | 12 | 10d |  |
| 23 |  | Giao diện thống kê | 56h | 2022-11-01 | 2022-11-09 | 12 | 10d |  |
| 24 |  | Thiết kế Database | 56h | 2022-11-10 | 2022-11-18 | 22, 23 | 10d |  |
| 25 | 1.3 | **HIỆN THỰC** | 37d | 2022-11-21 | 2023-01-10 | 10 | 10d |  |
| 26 | 1.3.1 | **Hiện thực các giao diện của người dùng** | 10d | 2022-11-21 | 2022-12-02 |  | 13d |  |
| 27 |  | Giao diện xác thực người quản lý | 80h | 2022-11-21 | 2022-12-02 |  | 13d |  |
| 28 |  | Giao diện tổng quát tình trạng của cả tòa nhà. | 80h | 2022-11-21 | 2022-12-02 |  | 13d |  |
| 29 |  | Giao diện điều khiển các thiết bị từng phòng. | 80h | 2022-11-21 | 2022-12-02 |  | 13d |  |
| 30 |  | Giao diện log cảnh báo | 80h | 2022-11-21 | 2022-12-02 |  | 13d |  |
| 31 |  | Giao diện thống kê | 80h | 2022-11-21 | 2022-12-02 |  | 13d |  |
| 32 | 1.3.2 | **Hiện thực các chức năng phần backend** | 22d | 2022-12-12 | 2023-01-10 |  |  |  |
| 33 |  | Hiện thực API cho việc xem dữ liệu các thiết bị từ các phòng học | 80h | 2022-12-05 | 2022-12-16 |  | 3d | start no earlier than 2022-12-05 |
| 34 |  | Hiện thực API cho việc thống kê dữ liệu người dùng | 80h | 2022-12-05 | 2022-12-16 |  | 3d | start no earlier than 2022-12-05 |
| 35 |  | Hiện thực API xem log của hệ thống | 80h | 2022-12-05 | 2022-12-16 |  | 3d | start no earlier than 2022-12-05 |
| 36 |  | Xử lí các dòng dữ liệu từ các thiết bị IOT | 80h | 2022-12-05 | 2022-12-16 |  | 3d | start no earlier than 2022-12-05 |
| 37 |  | Tự động phát hiện những bất thường xảy ra (quên tắt điện, quá tải) và gửi cảnh báo đến người quản lí | 56h | 2022-12-05 | 2022-12-13 |  | 6d | start no earlier than 2022-12-05 |
| 38 |  | Xây dựng bảo mật hệ thống | 24h | 2022-12-14 | 2022-12-16 |  | 29d | start no earlier than 2022-12-14 |
| 39 | 1.4 | **KIỂM THỬ CÁC CHỨC NĂNG** | 16d | 2022-12-19 | 2023-01-09 | 26, 33, 34, 35, 36, 37 | 1d |  |
| 40 | 1.4.1 | **Kiểm tra giao diện** | 7d | 2022-12-19 | 2022-12-27 |  | 3d |  |
| 41 |  | Giao diện xác thực người quản lý | 56h | 2022-12-19 | 2022-12-27 |  | 3d | start no earlier than 2022-12-19 |
| 42 |  | Giao diện tổng quát tình trạng của cả tòa nhà. | 56h | 2022-12-19 | 2022-12-27 |  | 3d | start no earlier than 2022-12-19 |
| 43 |  | Giao diện điều khiển các thiết bị từng phòng. | 56h | 2022-12-19 | 2022-12-27 |  | 3d | start no earlier than 2022-12-19 |
| 44 |  | Giao diện log cảnh báo | 56h | 2022-12-19 | 2022-12-27 |  | 3d | start no earlier than 2022-12-19 |
| 45 |  | Giao diện thống kê | 56h | 2022-12-19 | 2022-12-27 |  | 3d | start no earlier than 2022-12-19 |
| 46 | 1.4.2 | **Kiểm tra hiệu suất** | 7d | 2022-12-30 | 2023-01-09 | 40 | 1d |  |
| 47 |  | Kiểm tra các luồng thực thi chính của hệ thống | 56h | 2022-12-30 | 2023-01-09 |  | 1d | start no earlier than 2022-12-30 |
| 48 |  | Kiểm tra khả năng chịu tải của hệ thống | 56h | 2022-12-30 | 2023-01-09 |  | 1d | start no earlier than 2022-12-30 |
| 49 |  | Kiểm tra tốc độ kết nối và tín hiệu điều khiển các thiết bị IOT | 56h | 2022-12-30 | 2023-01-09 |  | 1d | start no earlier than 2022-12-30 |
| 50 | 1.5 | **TRIỂN KHAI HỆ THỐNG** | 12d | 2023-01-11 | 2023-01-26 | 25, 39 | 0d |  |
| 51 | 1.5.1 | **Triển khai các hạ tầng mạng** | 7d | 2023-01-11 | 2023-01-19 |  | 0d |  |
| 52 |  | Thiết kế sơ đồ mạng kết nối thiết bị | 56h | 2023-01-11 | 2023-01-19 |  | 0d | start no earlier than 2023-01-06 |
| 53 |  | Lắp đặt máy chủ | 56h | 2023-01-11 | 2023-01-19 |  | 0d | start no earlier than 2023-01-06 |
| 54 |  | Kết nối các thiết bị với trung tâm điều khiển | 56h | 2023-01-11 | 2023-01-19 |  | 0d | start no earlier than 2023-01-06 |
| 55 | 1.5.2 | **Triển khai hệ thống lên máy chủ của tòa H3** | 3d | 2023-01-20 | 2023-01-24 | 51 | 0d |  |
| 56 |  | Cài đặt HĐH Server cho máy chủ và các giao thức, dịch vụ mạng Server | 24h | 2023-01-20 | 2023-01-24 |  | 0d | start no earlier than 2023-01-16 |
| 57 |  | Cài đặt Firewall Server, Web Server, Mail Server nội bộ trên các hệ điều hành Windows và Linux | 24h | 2023-01-20 | 2023-01-24 |  | 0d | start no earlier than 2023-01-16 |
| 58 |  | Thiết Lập danh sách phòng ban và tài khoản người dùng trong Domain. | 24h | 2023-01-20 | 2023-01-24 |  | 0d | start no earlier than 2023-01-16 |
| 59 |  | Tạo những vùng dữ liệu và phân chia quyền hạn của từng user và phòng ban. | 24h | 2023-01-20 | 2023-01-24 |  | 0d | start no earlier than 2023-01-16 |
| 60 | 1.5.3 | **Chuyển giao hệ thống cho khách hàng** | 2d | 2023-01-25 | 2023-01-26 | 55 | 0d |  |
| 61 |  | Chuyển giao hồ sơ thiết kế hệ thống và sơ đồ mạng | 16h | 2023-01-25 | 2023-01-26 |  | 0d | start no earlier than 2023-01-20 |
| 62 |  | Hướng dẫn sử dụng và quản trị mạng. | 8h | 2023-01-25 | 2023-01-25 |  | 1d | start no earlier than 2023-01-20 |
| 63 | 1.6 | **Họp định kì hàng tuần với đội dev** | 66d | 2022-10-03 | 2023-01-02 |  | 0d |  |
| 64 |  | Họp định kì hàng tuần với đội dev 1 | 1d | 2022-10-03 | 2022-10-03 |  |  | start no earlier than 2022-10-03 |
| 65 |  | Họp định kì hàng tuần với đội dev 2 | 1d | 2022-10-10 | 2022-10-10 |  |  | start no earlier than 2022-10-10 |
| 66 |  | Họp định kì hàng tuần với đội dev 3 | 1d | 2022-10-17 | 2022-10-17 |  |  | start no earlier than 2022-10-17 |
| 67 |  | Họp định kì hàng tuần với đội dev 4 | 1d | 2022-10-24 | 2022-10-24 |  |  | start no earlier than 2022-10-24 |
| 68 |  | Họp định kì hàng tuần với đội dev 5 | 1d | 2022-10-31 | 2022-10-31 |  |  | start no earlier than 2022-10-31 |
| 69 |  | Họp định kì hàng tuần với đội dev 6 | 1d | 2022-11-07 | 2022-11-07 |  |  | start no earlier than 2022-11-07 |
| 70 |  | Họp định kì hàng tuần với đội dev 7 | 1d | 2022-11-14 | 2022-11-14 |  |  | start no earlier than 2022-11-14 |

| ID | Task | Duration | Start | Finish | Constraint |
| --- | --- | --- | --- | --- | --- |
| 71 | Họp định kì hàng tuần với đội dev 8 | 1d | 2022-11-21 | 2022-11-21 | start no earlier than 2022-11-21 |
| 72 | Họp định kì hàng tuần với đội dev 9 | 1d | 2022-11-28 | 2022-11-28 | start no earlier than 2022-11-28 |
| 73 | Họp định kì hàng tuần với đội dev 10 | 1d | 2022-12-05 | 2022-12-05 | start no earlier than 2022-12-05 |
| 74 | Họp định kì hàng tuần với đội dev 11 | 1d | 2022-12-12 | 2022-12-12 | start no earlier than 2022-12-12 |
| 75 | Họp định kì hàng tuần với đội dev 12 | 1d | 2022-12-19 | 2022-12-19 | start no earlier than 2022-12-19 |
| 76 | Họp định kì hàng tuần với đội dev 13 | 1d | 2022-12-26 | 2022-12-26 | start no earlier than 2022-12-26 |
| 77 | Họp định kì hàng tuần với đội dev 14 | 1d | 2023-01-02 | 2023-01-02 | start no earlier than 2023-01-02 |

## Version 2 (data date 2022-11-11, saved 2022-11-22, file Project.mpp)

Note of the change: add file mpp

Last finish 2023-01-26 → 2023-01-11 (-15d). Complete tasks 0 → 19.

Added:

| ID | Task | Duration | Start | Finish | Resources |
| --- | --- | --- | --- | --- | --- |
| 34 | Giao diện tổng quát tình trạng của cả tòa nhà. | 160h | 2022-11-21 | 2022-12-16 | Sang [50%] |

Changed:

| ID | Task | Start | Finish | Duration | Complete | Total float | Predecessors | Other |
| --- | --- | --- | --- | --- | --- | --- | --- | --- |
| 1 | **Total** | 2022-10-03 A | 2023-01-26 → 2023-01-11 (-15d) | 84d → 73d? | 0% → 24% | 0d → none |  | baseline start none → 2022-10-03; baseline finish none → 2023-01-11 |
| 2 | **XÁC ĐỊNH YÊU CẦU CHUNG** | 2022-10-03 A | 2022-10-11 A | 56h → 56h? | 0% → 100% |  |  | baseline start none → 2022-10-03; baseline finish none → 2022-10-11 |
| 3 | **Thu thập yêu cầu** | 2022-10-03 A | 2022-10-06 A |  | 0% → 100% | 10d → none |  | baseline start none → 2022-10-03; baseline finish none → 2022-10-06 |
| 4 | Gặp gỡ khách hàng | 2022-10-03 A | 2022-10-03 A | 1d? → 8h | 0% → 100% | 10d → none |  | baseline start none → 2022-10-03; baseline finish none → 2022-10-03 |
| 5 | Phân tích yêu cầu của khách hàng | 2022-10-04 A | 2022-10-05 A | 2d → 16h | 0% → 100% | 10d → none |  | baseline start none → 2022-10-04; baseline finish none → 2022-10-05 |
| 6 | Họp đội DEV, tổng hợp ý kiến | 2022-10-06 A | 2022-10-06 A |  | 0% → 100% | 10d → none |  | baseline start none → 2022-10-06; baseline finish none → 2022-10-06 |
| 7 | **Xây dựng đề án** | 2022-10-07 A | 2022-10-11 A |  | 0% → 100% | 10d → none |  | baseline start none → 2022-10-07; baseline finish none → 2022-10-11 |
| 8 | Viết đề án | 2022-10-07 A | 2022-10-10 A |  | 0% → 100% | 10d → none |  | resources Chủ; Sang → Sang; Chủ; baseline start none → 2022-10-07; baseline finish none → 2022-10-10 |
| 9 | Trình bày đề án với khách hàng | 2022-10-11 A | 2022-10-11 A |  | 0% → 100% | 10d → none |  | baseline start none → 2022-10-11; baseline finish none → 2022-10-11 |
| 10 | **THIẾT KẾ HỆ THỐNG** | 2022-10-12 A |  |  | 0% → 91% | 10d → 0d |  | baseline start none → 2022-10-12; baseline finish none → 2022-11-18 |
| 11 | Thiết kế kiến trúc hệ thống | 2022-10-12 A | 2022-10-20 → 2022-10-19 A (-1d) | 56h → 48h | 0% → 100% | 10d → none |  | baseline start none → 2022-10-12; baseline finish none → 2022-10-20 |
| 12 | **Vẽ các lược đồ minh họa cho các chức năng hệ thống** | 2022-10-21 → 2022-10-20 A (-1d) | 2022-10-31 → 2022-10-28 A (-3d) |  | 0% → 100% | 10d → none |  | baseline start none → 2022-10-21; baseline finish none → 2022-10-31 |
| 13 | Xem trạng các thiết bị của từng phòng | 2022-10-21 → 2022-10-20 A (-1d) | 2022-10-31 → 2022-10-27 A (-4d) | 56h → 48h | 0% → 100% | 10d → none | 11 → none | baseline start none → 2022-10-21; baseline finish none → 2022-10-31 |
| 14 | Xem lượng điện tiêu thụ | 2022-10-21 → 2022-10-20 A (-1d) | 2022-10-31 → 2022-10-26 A (-5d) | 56h → 40h | 0% → 100% | 10d → none | 11 → none | baseline start none → 2022-10-21; baseline finish none → 2022-10-31 |
| 15 | Điều khiển các thiết bị | 2022-10-21 → 2022-10-20 A (-1d) | 2022-10-31 → 2022-10-27 A (-4d) | 56h → 48h | 0% → 100% | 10d → none | 11 → none | baseline start none → 2022-10-21; baseline finish none → 2022-10-31 |
| 16 | Cảnh báo khi có bất thường xảy ra (thiết bị hoạt động khi không có người…) | 2022-10-21 → 2022-10-20 A (-1d) | 2022-10-31 → 2022-10-27 A (-4d) | 56h → 48h | 0% → 100% | 10d → none | 11 → none | baseline start none → 2022-10-21; baseline finish none → 2022-10-31 |
| 17 | Thống kê dữ liệu | 2022-10-21 → 2022-10-20 A (-1d) | 2022-10-31 → 2022-10-28 A (-3d) |  | 0% → 100% | 10d → none | 11 → none | baseline start none → 2022-10-21; baseline finish none → 2022-10-31 |
| 18 | **Thiết kế giao diện hệ thống** | 2022-11-01 → 2022-10-28 A (-4d) | 2022-11-14 → 2022-11-11 (-3d) | 10d → 11d | 0% → 93% | 10d → 5d |  | baseline start none → 2022-11-01; baseline finish none → 2022-11-14 |
| 19 | Giao diện xác thực người quản lý | 2022-11-01 → 2022-10-31 A (-1d) | 2022-11-14 → 2022-11-11 (-3d) |  | 0% → 90% | 14d → 5d | 12 → none | baseline start none → 2022-11-01; baseline finish none → 2022-11-14 |
| 20 | Giao diện tổng quát tình trạng của cả tòa nhà. | 2022-11-01 → 2022-10-31 A (-1d) | 2022-11-14 → 2022-11-11 (-3d) |  | 0% → 90% | 14d → 5d | 12 → none | baseline start none → 2022-11-01; baseline finish none → 2022-11-14 |
| 21 | Giao diện điều khiển các thiết bị từng phòng. | 2022-11-01 → 2022-10-28 A (-4d) | 2022-11-14 → 2022-11-10 (-4d) |  | 0% → 90% | 14d → 6d | 12 → none | baseline start none → 2022-11-01; baseline finish none → 2022-11-14 |
| 22 | Giao diện log cảnh báo | 2022-11-01 → 2022-10-28 A (-4d) | 2022-11-09 A | 56h → 72h | 0% → 100% | 10d → none | 12 → none | baseline start none → 2022-11-01; baseline finish none → 2022-11-09 |
| 23 | Giao diện thống kê | 2022-11-01 A | 2022-11-09 A |  | 0% → 100% | 10d → none | 12 → none | baseline start none → 2022-11-01; baseline finish none → 2022-11-09 |
| 24 | Thiết kế Database | 2022-11-10 A |  |  | 0% → 29% | 10d → 0d |  | baseline start none → 2022-11-10; baseline finish none → 2022-11-18 |
| 25 | **HIỆN THỰC** |  | 2023-01-10 → 2022-12-16 (-25d) | 37d → 20d |  | 10d → 0d |  | baseline start none → 2022-11-21; baseline finish none → 2022-12-16 |
| 26 | **Hiện thực các giao diện của người dùng** |  | 2022-12-02 → 2022-12-16 (+14d) | 10d → 20d |  | 13d → 0d |  | baseline start none → 2022-11-21; baseline finish none → 2022-12-16 |
| 27 | Giao diện xác thực người quản lý |  | 2022-12-02 → 2022-12-16 (+14d) | 80h → 160h |  | 13d → 0d |  | resources Vinh → Vinh [50%]; baseline start none → 2022-11-21; baseline finish none → 2022-12-16 |
| 28 | Giao diện tổng quát tình trạng của cả tòa nhà. |  | 2022-12-02 → 2022-12-16 (+14d) | 80h → 160h |  | 13d → 0d |  | resources Sang → Sang [50%]; baseline start none → 2022-11-21; baseline finish none → 2022-12-16 |
| 29 | Giao diện điều khiển các thiết bị từng phòng. |  | 2022-12-02 → 2022-12-16 (+14d) | 80h → 160h |  | 13d → 0d |  | resources Chủ → Chủ [50%]; baseline start none → 2022-11-21; baseline finish none → 2022-12-16 |
| 30 | Giao diện log cảnh báo |  |  |  |  | 13d → 0d |  | baseline start none → 2022-11-21; baseline finish none → 2022-12-02 |
| 31 | Giao diện thống kê |  | 2022-12-02 → 2022-12-16 (+14d) | 80h → 160h |  | 13d → 0d |  | resources Nhật → Nhật [30%]; baseline start none → 2022-11-21; baseline finish none → 2022-12-16 |
| 32 | **Hiện thực các chức năng phần backend** | 2022-12-12 → 2022-11-21 (-21d) | 2023-01-10 → 2022-12-16 (-25d) | 22d → 20d |  | none → 0d |  | baseline start none → 2022-11-21; baseline finish none → 2022-12-16 |
| 33 | Hiện thực API cho việc xem dữ liệu các thiết bị từ các phòng học | 2022-12-05 → 2022-11-21 (-14d) |  | 80h → 160h |  | 3d → 0d |  | constraint start no earlier than 2022-12-05 → none; resources Vinh → Vinh [50%]; baseline start none → 2022-11-21; baseline finish none → 2022-12-16 |
| 35 | Hiện thực API cho việc thống kê dữ liệu người dùng | 2022-12-05 → 2022-11-21 (-14d) |  | 80h → 160h |  | 3d → 0d |  | constraint start no earlier than 2022-12-05 → none; resources Sang → Chủ [50%]; baseline start none → 2022-11-21; baseline finish none → 2022-12-16 |
| 36 | Hiện thực API xem log của hệ thống |  |  |  |  | 3d → 0d | none → 30 | constraint start no earlier than 2022-12-05 → none; resources Chủ → Khánh [50%]; baseline start none → 2022-12-05; baseline finish none → 2022-12-16 |
| 37 | Xử lí các dòng dữ liệu từ các thiết bị IOT |  |  |  |  | 3d → 0d | none → 30 | constraint start no earlier than 2022-12-05 → none; resources Khánh → Khánh [50%]; baseline start none → 2022-12-05; baseline finish none → 2022-12-16 |
| 38 | Tự động phát hiện những bất thường xảy ra (quên tắt điện, quá tải) và gửi cảnh báo đến người quản lí | 2022-12-05 → 2022-11-21 (-14d) | 2022-12-13 → 2022-12-16 (+3d) | 56h → 160h |  | 6d → 0d |  | constraint start no earlier than 2022-12-05 → none; resources Nhật → Nhật [40%]; baseline start none → 2022-11-21; baseline finish none → 2022-12-16 |
| 39 | Xây dựng bảo mật hệ thống | 2022-12-14 → 2022-11-21 (-23d) |  | 24h → 160h |  | 29d → 0d |  | constraint start no earlier than 2022-12-14 → none; resources Nhật → Nhật [30%]; baseline start none → 2022-11-21; baseline finish none → 2022-12-16 |
| 40 | **KIỂM THỬ CÁC CHỨC NĂNG** |  | 2023-01-09 → 2022-12-30 (-10d) | 16d → 10d |  | 1d → 0d | 26, 33, 35, 36, 37, 38 → 25 | baseline start none → 2022-12-19; baseline finish none → 2022-12-30 |
| 41 | **Kiểm tra giao diện** |  | 2022-12-27 → 2022-12-23 (-4d) | 7d → 5d |  | 3d → 0d |  | baseline start none → 2022-12-19; baseline finish none → 2022-12-23 |
| 42 | Giao diện xác thực người quản lý |  | 2022-12-27 → 2022-12-23 (-4d) | 56h → 40h |  | 3d → 0d |  | constraint start no earlier than 2022-12-19 → none; baseline start none → 2022-12-19; baseline finish none → 2022-12-23 |
| 43 | Giao diện tổng quát tình trạng của cả tòa nhà. |  | 2022-12-27 → 2022-12-23 (-4d) | 56h → 5d |  | 3d → 0d |  | constraint start no earlier than 2022-12-19 → none; baseline start none → 2022-12-19; baseline finish none → 2022-12-23 |
| 44 | Giao diện điều khiển các thiết bị từng phòng. |  | 2022-12-27 → 2022-12-23 (-4d) | 56h → 5d |  | 3d → 0d |  | constraint start no earlier than 2022-12-19 → none; baseline start none → 2022-12-19; baseline finish none → 2022-12-23 |
| 45 | Giao diện log cảnh báo |  | 2022-12-27 → 2022-12-23 (-4d) | 56h → 5d |  | 3d → 0d |  | constraint start no earlier than 2022-12-19 → none; baseline start none → 2022-12-19; baseline finish none → 2022-12-23 |
| 46 | Giao diện thống kê |  | 2022-12-27 → 2022-12-23 (-4d) | 56h → 5d |  | 3d → 0d |  | constraint start no earlier than 2022-12-19 → none; baseline start none → 2022-12-19; baseline finish none → 2022-12-23 |
| 47 | **Kiểm tra hiệu suất** | 2022-12-30 → 2022-12-26 (-4d) | 2023-01-09 → 2022-12-30 (-10d) | 7d → 5d |  | 1d → 0d |  | baseline start none → 2022-12-26; baseline finish none → 2022-12-30 |
| 48 | Kiểm tra các luồng thực thi chính của hệ thống | 2022-12-30 → 2022-12-26 (-4d) | 2023-01-09 → 2022-12-30 (-10d) | 56h → 40h |  | 1d → 0d |  | constraint start no earlier than 2022-12-30 → none; baseline start none → 2022-12-26; baseline finish none → 2022-12-30 |
| 49 | Kiểm tra khả năng chịu tải của hệ thống | 2022-12-30 → 2022-12-26 (-4d) | 2023-01-09 → 2022-12-30 (-10d) | 56h → 40h |  | 1d → 0d |  | constraint start no earlier than 2022-12-30 → none; baseline start none → 2022-12-26; baseline finish none → 2022-12-30 |
| 50 | Kiểm tra tốc độ kết nối và tín hiệu điều khiển các thiết bị IOT | 2022-12-30 → 2022-12-26 (-4d) | 2023-01-09 → 2022-12-30 (-10d) | 56h → 40h |  | 1d → 0d |  | constraint start no earlier than 2022-12-30 → none; resources Khánh → Vinh; baseline start none → 2022-12-26; baseline finish none → 2022-12-30 |
| 51 | **TRIỂN KHAI HỆ THỐNG** | 2023-01-11 → 2023-01-02 (-9d) | 2023-01-26 → 2023-01-11 (-15d) | 12d → 8d |  |  |  | baseline start none → 2023-01-02; baseline finish none → 2023-01-11 |
| 52 | **Triển khai các hạ tầng mạng** | 2023-01-11 → 2023-01-02 (-9d) | 2023-01-19 → 2023-01-04 (-15d) | 7d → 3d |  |  |  | baseline start none → 2023-01-02; baseline finish none → 2023-01-04 |
| 53 | Thiết kế sơ đồ mạng kết nối thiết bị | 2023-01-11 → 2023-01-02 (-9d) | 2023-01-19 → 2023-01-04 (-15d) | 56h → 24h |  |  |  | constraint start no earlier than 2023-01-06 → none; resources Vinh [50%]; Sang [50%] → Vinh; Sang; baseline start none → 2023-01-02; baseline finish none → 2023-01-04 |
| 54 | Lắp đặt máy chủ | 2023-01-11 → 2023-01-02 (-9d) | 2023-01-19 → 2023-01-04 (-15d) | 56h → 24h |  |  |  | constraint start no earlier than 2023-01-06 → none; resources Nhật [50%]; Khánh [50%] → Nhật; Khánh; baseline start none → 2023-01-02; baseline finish none → 2023-01-04 |
| 55 | Kết nối các thiết bị với trung tâm điều khiển | 2023-01-11 → 2023-01-02 (-9d) | 2023-01-19 → 2023-01-04 (-15d) | 56h → 24h |  |  |  | constraint start no earlier than 2023-01-06 → none; baseline start none → 2023-01-02; baseline finish none → 2023-01-04 |
| 56 | **Triển khai hệ thống lên máy chủ của tòa H3** | 2023-01-20 → 2023-01-05 (-15d) | 2023-01-24 → 2023-01-09 (-15d) |  |  |  |  | baseline start none → 2023-01-05; baseline finish none → 2023-01-09 |
| 57 | Cài đặt HĐH Server cho máy chủ và các giao thức, dịch vụ mạng Server | 2023-01-20 → 2023-01-05 (-15d) | 2023-01-24 → 2023-01-09 (-15d) |  |  |  |  | constraint start no earlier than 2023-01-16 → none; baseline start none → 2023-01-05; baseline finish none → 2023-01-09 |
| 58 | Cài đặt Firewall Server, Web Server, Mail Server nội bộ trên các hệ điều hành Windows và Linux | 2023-01-20 → 2023-01-05 (-15d) | 2023-01-24 → 2023-01-09 (-15d) |  |  |  |  | constraint start no earlier than 2023-01-16 → none; baseline start none → 2023-01-05; baseline finish none → 2023-01-09 |
| 59 | Thiết Lập danh sách phòng ban và tài khoản người dùng trong Domain. | 2023-01-20 → 2023-01-05 (-15d) | 2023-01-24 → 2023-01-09 (-15d) |  |  |  |  | constraint start no earlier than 2023-01-16 → none; baseline start none → 2023-01-05; baseline finish none → 2023-01-09 |
| 60 | Tạo những vùng dữ liệu và phân chia quyền hạn của từng user và phòng ban. | 2023-01-20 → 2023-01-05 (-15d) | 2023-01-24 → 2023-01-09 (-15d) |  |  |  |  | constraint start no earlier than 2023-01-16 → none; baseline start none → 2023-01-05; baseline finish none → 2023-01-09 |
| 61 | **Chuyển giao hệ thống cho khách hàng** | 2023-01-25 → 2023-01-10 (-15d) | 2023-01-26 → 2023-01-11 (-15d) |  |  |  |  | baseline start none → 2023-01-10; baseline finish none → 2023-01-11 |
| 62 | Chuyển giao hồ sơ thiết kế hệ thống và sơ đồ mạng | 2023-01-25 → 2023-01-10 (-15d) | 2023-01-26 → 2023-01-11 (-15d) |  |  |  |  | constraint start no earlier than 2023-01-20 → none; baseline start none → 2023-01-10; baseline finish none → 2023-01-11 |
| 63 | Hướng dẫn sử dụng và quản trị mạng. | 2023-01-25 → 2023-01-10 (-15d) | 2023-01-25 → 2023-01-10 (-15d) |  |  |  |  | constraint start no earlier than 2023-01-20 → none; baseline start none → 2023-01-10; baseline finish none → 2023-01-10 |
| 64 | **Họp định kì hàng tuần với đội dev** | 2022-10-03 A |  | 66d → 65.25d | 0% → 43% | 0d → 7.75d |  | baseline start none → 2022-10-03; baseline finish none → 2023-01-02 |
| 65 | Họp định kì hàng tuần với đội dev 1 | 2022-10-03 A | 2022-10-03 A | 1d → 2h | 0% → 100% |  |  | baseline start none → 2022-10-03; baseline finish none → 2022-10-03 |
| 66 | Họp định kì hàng tuần với đội dev 2 | 2022-10-10 A | 2022-10-10 A | 1d → 2h | 0% → 100% |  |  | baseline start none → 2022-10-10; baseline finish none → 2022-10-10 |
| 67 | Họp định kì hàng tuần với đội dev 3 | 2022-10-17 A | 2022-10-17 A | 1d → 2h | 0% → 100% |  |  | baseline start none → 2022-10-17; baseline finish none → 2022-10-17 |
| 68 | Họp định kì hàng tuần với đội dev 4 | 2022-10-24 A | 2022-10-24 A | 1d → 2h | 0% → 100% |  |  | baseline start none → 2022-10-24; baseline finish none → 2022-10-24 |
| 69 | Họp định kì hàng tuần với đội dev 5 | 2022-10-31 A | 2022-10-31 A | 1d → 2h | 0% → 100% |  |  | baseline start none → 2022-10-31; baseline finish none → 2022-10-31 |
| 70 | Họp định kì hàng tuần với đội dev 6 | 2022-11-07 A | 2022-11-07 A | 1d → 2h | 0% → 100% |  |  | baseline start none → 2022-11-07; baseline finish none → 2022-11-07 |
| 71 | Họp định kì hàng tuần với đội dev 7 |  |  | 1d → 2h |  | none → 43.75d |  | baseline start none → 2022-11-14; baseline finish none → 2022-11-14 |

| ID | Task | Duration | Total float | Other |
| --- | --- | --- | --- | --- |
| 72 | Họp định kì hàng tuần với đội dev 8 | 1d → 2h | none → 38.75d | baseline start none → 2022-11-21; baseline finish none → 2022-11-21 |
| 73 | Họp định kì hàng tuần với đội dev 9 | 1d → 2h | none → 33.75d | baseline start none → 2022-11-28; baseline finish none → 2022-11-28 |
| 74 | Họp định kì hàng tuần với đội dev 10 | 1d → 2h | none → 28.75d | baseline start none → 2022-12-05; baseline finish none → 2022-12-05 |
| 75 | Họp định kì hàng tuần với đội dev 11 | 1d → 2h | none → 23.75d | baseline start none → 2022-12-12; baseline finish none → 2022-12-12 |
| 76 | Họp định kì hàng tuần với đội dev 12 | 1d → 2h | none → 18.75d | baseline start none → 2022-12-19; baseline finish none → 2022-12-19 |
| 77 | Họp định kì hàng tuần với đội dev 13 | 1d → 2h | none → 13.75d | baseline start none → 2022-12-26; baseline finish none → 2022-12-26 |
| 78 | Họp định kì hàng tuần với đội dev 14 | 1d → 2h | none → 8.75d | baseline start none → 2023-01-02; baseline finish none → 2023-01-02 |
